# STAFF ID MODULE

Schedule from MS Project, 2024-10-21 to 2026-01-13, A marks actual dates.

## Calendars

- Standard: Mon-Fri 08:00-12:00, 13:00-17:00; Sat-Sun off.

## Resources

| Resource |
| --- |
| Andrew Asamoah |
| Stephen Addo |
| Philip Mante Asare |
| Ernest Duker |
| Denise Longdon-Frimpong |

## Schedule

| ID | WBS | Task | Type | Duration | Start | Finish | Predecessors | Complete | Remaining | Total slack | Constraint | Resources | Work | Actual work |
| --- | --- | --- | --- | --- | --- | --- | --- | --- | --- | --- | --- | --- | --- | --- |
| 1 | 1 | **STAFF ID MODULE** |  | 321.8d | 2024-10-21 A | 2026-01-13 |  | 87% | 41.86d | 0d |  | Philip Mante Asare | 8412.8h | 6518.22h |
| 2 | 1.1 | **Phase 1: Project Initiation** |  | 1d | 2024-10-21 A | 2024-10-21 A |  | 100% |  |  |  | Philip Mante Asare | 8h | 8h |
| 3 | 1.1.1 | Kickoff Meeting | milestone | 0d | 2024-10-21 A | 2024-10-21 A |  | 100% |  |  |  | Andrew Asamoah; Denise Longdon-Frimpong; Philip Mante Asare; Ernest Duker; Stephen Addo |  |  |
| 4 | 1.1.2 | Stakeholder Identification | milestone | 0d | 2024-10-21 A | 2024-10-21 A | 3SS | 100% |  |  |  | Philip Mante Asare |  |  |
| 5 | 1.1.3 | Identify needed resources | milestone | 0d | 2024-10-21 A | 2024-10-21 A | 4SS | 100% |  |  |  | Philip Mante Asare |  |  |
| 6 | 1.2 | PROJECT KICKOFF | milestone | 0d | 2024-10-21 A | 2024-10-21 A |  | 100% |  |  |  | Philip Mante Asare |  |  |
| 7 | 1.3 | **Phase 2: Requirements Gathering** |  | 6d | 2024-10-24 A | 2024-10-31 A | 6 | 100% |  |  |  | Philip Mante Asare | 528h | 528h |
| 8 | 1.3.1 | **Business Requirements Documentation** |  | 2d | 2024-10-24 A | 2024-10-25 A | 6SS | 100% |  |  |  | Philip Mante Asare | 456h | 456h |
| 9 | 1.3.1.1 | Interview stakeholders to gather business needs | milestone | 0d | 2024-10-24 A | 2024-10-24 A |  | 100% |  |  |  | Philip Mante Asare |  |  |
| 10 | 1.3.1.2 | Document business processes and key workflows |  | 57d | 2024-10-24 A | 2024-10-25 A | 9SS | 100% |  |  |  | Andrew Asamoah; Denise Longdon-Frimpong; Philip Mante Asare | 456h | 456h |
| 11 | 1.3.2 | **Technical Requirements Definition** |  | 1d | 2024-10-28 A | 2024-10-28 A | 8, 9, 10 | 100% |  |  |  | Philip Mante Asare; Ernest Duker |  |  |
| 12 | 1.3.2.1 | Define technical requirements for system architecture, integration with NIA, utilizing ghana card, and access control system | milestone | 0d | 2024-10-28 A | 2024-10-28 A |  | 100% |  |  | start no earlier than 2024-10-28 | Philip Mante Asare |  |  |
| 13 | 1.3.3 | **Functional Requirements Specification** |  | 1d | 2024-10-29 A | 2024-10-29 A | 11, 12 | 100% |  |  |  | Philip Mante Asare |  |  |
| 14 | 1.3.3.1 | Outline the functional specifications (user management, access control) | milestone | 0d | 2024-10-29 A | 2024-10-29 A |  | 100% |  |  | start no earlier than 2024-10-28 | Philip Mante Asare |  |  |
| 15 | 1.3.3.2 | Document the requirements (business, functional and non-functional) | milestone | 0d | 2024-10-29 A | 2024-10-29 A |  | 100% |  |  | start no earlier than 2024-10-28 | Philip Mante Asare |  |  |
| 16 | 1.3.4 | **Approval of Requirements** |  | 2d | 2024-10-30 A | 2024-10-31 A | 13, 14, 15 | 100% |  |  |  | Philip Mante Asare | 32h | 32h |
| 17 | 1.3.4.1 | Review and get stakeholder approval on all business, technical, and functional requirements |  | 2d | 2024-10-30 A | 2024-10-31 A |  | 100% |  |  |  | Philip Mante Asare | 16h | 16h |
| 18 | 1.4 | REQUIREMENTS FINALIZATION | milestone | 0d | 2024-10-31 A | 2024-10-31 A | 16 | 100% |  |  |  | Philip Mante Asare |  |  |
| 19 | 1.5 | **Phase 3: System Design** |  | 35d | 2024-11-05 A | 2024-12-23 A | 16FS+2d | 100% |  |  |  | Philip Mante Asare | 840h | 840h |
| 20 | 1.5.1 | **High-Level Architecture Design** |  | 10d | 2024-11-05 A | 2024-11-18 A |  | 100% |  |  |  | Philip Mante Asare | 160h | 160h |
| 21 | 1.5.1.1 | Define system architecture (Web Based) |  | 2d | 2024-11-05 A | 2024-11-06 A | 18 | 100% |  |  |  | Philip Mante Asare | 16h | 16h |
| 22 | 1.5.1.2 | Design database schema for employee details, biometric data, and access control |  | 8d | 2024-11-07 A | 2024-11-18 A | 21 | 100% |  |  |  | Philip Mante Asare | 64h | 64h |
| 23 | 1.5.2 | **Integration Design** |  | 11d | 2024-11-19 A | 2024-12-03 A | 22 | 100% |  |  |  | Philip Mante Asare | 176h | 176h |
| 24 | 1.5.2.1 | Design NIA API integration module |  | 3d | 2024-11-19 A | 2024-11-21 A | 21 | 100% |  |  |  | Philip Mante Asare | 24h | 24h |
| 25 | 1.5.2.2 | Design Ghana Card integration and verification system |  | 4d | 2024-11-22 A | 2024-11-27 A | 24 | 100% |  |  |  | Philip Mante Asare | 32h | 32h |
| 26 | 1.5.2.3 | Design access control system integration |  | 4d | 2024-11-28 A | 2024-12-03 A | 25 | 100% |  |  |  | Philip Mante Asare | 32h | 32h |

| ID | WBS | Task | Type | Duration | Start | Finish | Predecessors | Complete | Remaining | Total slack | Constraint | Resources | Work | Actual work |
| --- | --- | --- | --- | --- | --- | --- | --- | --- | --- | --- | --- | --- | --- | --- |
| 27 | 1.5.3 | **UI/UX Design** |  | 11d | 2024-12-04 A | 2024-12-18 A | 26 | 100% |  |  |  | Philip Mante Asare | 176h | 176h |
| 28 | 1.5.3.1 | Design user interfaces for web app (HR dashboards, employee onboarding form) |  | 7d | 2024-12-04 A | 2024-12-12 A | 26 | 100% |  |  |  | Philip Mante Asare | 56h | 56h |
| 29 | 1.5.3.2 | Prepare wireframes and mockups |  | 4d | 2024-12-13 A | 2024-12-18 A | 28 | 100% |  |  |  | Philip Mante Asare | 32h | 32h |
| 30 | 1.5.4 | **Technical Review & Approval** |  | 3d | 2024-12-19 A | 2024-12-23 A | 29 | 100% |  |  |  | Philip Mante Asare | 48h | 48h |
| 31 | 1.5.4.1 | Review design documents with stakeholders |  | 2d | 2024-12-19 A | 2024-12-20 A | 29 | 100% |  |  |  | Philip Mante Asare | 16h | 16h |
| 32 | 1.5.4.2 | Obtain approval to move to development |  | 1d | 2024-12-23 A | 2024-12-23 A | 31 | 100% |  |  |  | Philip Mante Asare | 8h | 8h |
| 33 | 1.6 | SYSTEM DESIGN COMPLETE | milestone | 0d | 2024-12-23 A | 2024-12-23 A | 32 | 100% |  |  |  | Andrew Asamoah; Philip Mante Asare |  |  |
| 34 | 1.7 | **Phase 4: Core Development** |  | 87d | 2024-12-24 A | 2025-04-23 | 33 | 99% | 0d | 0d |  | Philip Mante Asare | 1936h | 1896h |
| 35 | 1.7.1 | **NIA Integration Module Development** |  | 13d | 2024-12-24 A | 2025-01-09 A |  | 100% |  |  |  | Philip Mante Asare | 208h | 208h |
| 36 | 1.7.1.1 | Set up NIA API connection |  | 3d | 2024-12-24 A | 2024-12-26 A |  | 100% |  |  | start no earlier than 2024-12-23 | Philip Mante Asare | 24h | 24h |
| 37 | 1.7.1.2 | Develop the API request/response handler |  | 3d | 2024-12-27 A | 2024-12-31 A | 36 | 100% |  |  | start no earlier than 2024-12-25 | Philip Mante Asare | 24h | 24h |
| 38 | 1.7.1.3 | Implement data retrieval and verification logic |  | 3d | 2025-01-01 A | 2025-01-03 A | 37 | 100% |  |  |  | Philip Mante Asare | 24h | 24h |
| 39 | 1.7.1.4 | Test data retrieval with dummy/test data from NIA |  | 2d | 2025-01-06 A | 2025-01-07 A | 38 | 100% |  |  |  | Philip Mante Asare | 16h | 16h |
| 40 | 1.7.1.5 | Ensure error handling and response parsing |  | 2d | 2025-01-08 A | 2025-01-09 A | 39 | 100% |  |  |  | Philip Mante Asare | 16h | 16h |
| 41 | 1.7.2 | NIA Integration Module Complete | milestone | 0d | 2025-01-09 A | 2025-01-09 A | 40 | 100% |  |  |  | Philip Mante Asare |  |  |
| 42 | 1.7.3 | **Ghana Card Integration Development** |  | 12d | 2025-01-10 A | 2025-01-27 | 41 | 99% | 0d | 0d |  | Philip Mante Asare | 192h | 152h |
| 43 | 1.7.3.1 | Develop Ghana Card verification module |  | 7d | 2025-01-10 A | 2025-01-20 A |  | 100% |  |  |  | Philip Mante Asare | 56h | 56h |
| 44 | 1.7.3.2 | Implement Ghana Card data extraction and validation |  | 5d | 2025-01-21 A | 2025-01-27 A | 43 | 100% |  |  |  | Philip Mante Asare | 40h | 40h |
| 45 | 1.7.3.3 | Ghana Card Integration Complete | milestone | 0d | 2025-01-27 A | 2025-01-27 A | 44 | 100% |  |  |  | Philip Mante Asare |  |  |
| 46 | 1.7.4 | **Front-End Development (Web App UI)** |  | 22d | 2025-02-06 A | 2025-03-07 A | 45 | 100% |  |  |  | Philip Mante Asare | 352h | 352h |
| 47 | 1.7.4.1 | Build user interfaces for admin dashboard |  | 7d | 2025-02-06 A | 2025-02-14 A |  | 100% |  |  |  | Philip Mante Asare | 56h | 56h |
| 48 | 1.7.4.2 | Build user interfaces for employee onboarding |  | 5d | 2025-02-17 A | 2025-02-21 A | 47 | 100% |  |  |  | Philip Mante Asare | 40h | 40h |
| 49 | 1.7.4.3 | Implement form validation for Ghana Card and biometric data input |  | 4d | 2025-02-24 A | 2025-02-27 A | 48 | 100% |  |  |  | Philip Mante Asare | 32h | 32h |
| 50 | 1.7.4.4 | Develop user role management pages (for creating, modifying, and deactivating accounts) |  | 4d | 2025-02-28 A | 2025-03-05 A | 49 | 100% |  |  |  | Philip Mante Asare | 32h | 32h |
| 51 | 1.7.4.5 | Ensure responsive design and accessibility standards |  | 2d | 2025-03-06 A | 2025-03-07 A | 50 | 100% |  |  |  | Philip Mante Asare | 16h | 16h |
| 52 | 1.7.5 | Front-End Development Complete | milestone | 0d | 2025-03-07 A | 2025-03-07 A | 51 | 100% |  |  |  | Philip Mante Asare |  |  |

| ID | WBS | Task | Type | Duration | Start | Finish | Predecessors | Complete | Remaining | Actual start | Total slack | Constraint | Resources | Work | Actual work |
| --- | --- | --- | --- | --- | --- | --- | --- | --- | --- | --- | --- | --- | --- | --- | --- |
| 53 | 1.7.6 | **Biometric Data Integration** |  | 16d | 2025-03-10 A | 2025-03-31 A | 52 | 100% |  |  |  |  | Philip Mante Asare | 216h | 216h |
| 54 | 1.7.6.1 | Set up fingerprint and facial recognition device integration |  | 5d | 2025-03-10 A | 2025-03-14 A |  | 100% |  |  |  |  | Philip Mante Asare | 40h | 40h |
| 55 | 1.7.6.2 | Develop functionality to capture biometric data (enrollment process) |  | 4d | 2025-03-17 A | 2025-03-20 A | 54 | 100% |  |  |  |  | Philip Mante Asare | 32h | 32h |
| 56 | 1.7.6.3 | Test biometric data validation process |  | 2d | 2025-03-28 A | 2025-03-31 A | 55 | 100% |  |  |  |  | Philip Mante Asare | 16h | 16h |
| 57 | 1.7.7 | Biometric Integration Complete | milestone | 0d | 2025-03-31 A | 2025-03-31 A | 56 | 100% |  |  |  |  | Philip Mante Asare |  |  |
| 58 | 1.7.8 | **Access Control System Integration** |  | 17d | 2025-04-01 A | 2025-04-23 A | 57 | 100% |  |  |  |  | Philip Mante Asare | 272h | 272h |
| 59 | 1.7.8.1 | Integrate the web app with the building’s access control system |  | 5d | 2025-04-01 A | 2025-04-07 A |  | 100% |  |  |  |  | Philip Mante Asare | 40h | 40h |
| 60 | 1.7.8.2 | Develop permission and role-based access control management (defining which areas employees can access) |  | 7d | 2025-04-08 A | 2025-04-16 A | 59 | 100% |  |  |  |  | Philip Mante Asare | 56h | 56h |
| 61 | 1.7.8.3 | Set up a way to keep access data in sync between the access device and the database. |  | 5d | 2025-04-17 A | 2025-04-23 A | 60 | 100% |  |  |  |  | Philip Mante Asare | 40h | 40h |
| 62 | 1.7.9 | Access Control Integration Complete | milestone | 0d | 2025-04-23 A | 2025-04-23 A | 61 | 100% |  |  |  |  | Philip Mante Asare |  |  |
| 63 | 1.8 | **Phase 5: Testing and QA** |  | 19d | 2025-08-06 A | 2025-09-01 |  | 99% | 0d |  |  |  | Philip Mante Asare | 320h | 280h |
| 64 | 1.8.1 | Unit Testing |  | 3d | 2025-08-13 A | 2025-08-15 A |  | 100% |  |  |  |  | Philip Mante Asare | 24h | 24h |
| 65 | 1.8.2 | Integration Testing |  | 5d | 2025-08-18 A | 2025-08-22 A | 64 | 100% |  |  |  |  | Philip Mante Asare | 40h | 40h |
| 66 | 1.8.3 | User Acceptance Testing (UAT) |  | 5d | 2025-08-25 A | 2025-08-29 A | 65 | 100% |  |  |  |  | Philip Mante Asare | 40h | 40h |
| 67 | 1.8.4 | Security Testing |  | 3d | 2025-08-19 A | 2025-08-21 A | 66 | 100% |  |  |  |  | Philip Mante Asare | 24h | 24h |
| 68 | 1.8.5 | Performance Testing |  | 5d | 2025-08-25 A | 2025-08-29 A | 67 | 100% |  |  |  | finish no earlier than 2025-08-29 | Philip Mante Asare | 40h | 40h |
| 69 | 1.9 | TESTING COMPLETE |  | 22d | 2025-08-06 A | 2025-09-05 A |  | 100% |  |  |  |  | Philip Mante Asare | 176h | 176h |
| 70 | 1.10 | **Phase 6: User Documentation and Training** |  | 63.4d | 2025-09-08 | 2025-12-04 | 69 | 99% | 0d | 2025-08-05 |  |  | Philip Mante Asare | 643.2h | 180.8h |
| 71 | 1.10.1 | User Manual Creation |  | 10d | 2025-08-18 A | 2025-08-29 A |  | 100% |  |  |  | finish no earlier than 2025-08-30 | Philip Mante Asare | 80h | 80h |
| 72 | 1.10.2 | Training Materials Development |  | 4d | 2025-08-05 A | 2025-09-09 A | 71 | 100% |  |  |  |  | Philip Mante Asare | 32h | 32h |
| 73 | 1.10.3 | Conduct Training Sessions |  | 3d | 2025-09-09 A | 2025-09-12 A | 72 | 100% |  |  |  |  | Philip Mante Asare | 24h | 24h |
| 74 | 1.11 | USER DOCUMENTATION AND TRAINING COMPLETE |  | 59.4d | 2025-08-06 A | 2025-12-04 | 73 | 78% | 13.16d |  | 0d | finish no earlier than 2025-12-04 | Philip Mante Asare | 475.2h | 369.92h |
| 75 | 1.12 | **Phase 7: Deployment and Go-Live** |  | 14d | 2025-12-04 | 2025-12-24 | 74 |  |  |  | 0d |  | Philip Mante Asare | 448h |  |
| 76 | 1.12.1 | System Deployment |  | 5d | 2025-12-04 | 2025-12-11 |  |  |  |  | 0d |  | Andrew Asamoah; Philip Mante Asare; Stephen Addo | 120h |  |
| 77 | 1.12.2 | Data Migration |  | 4d | 2025-12-11 | 2025-12-17 | 76 |  |  |  | 0d |  | Andrew Asamoah; Philip Mante Asare; Stephen Addo | 96h |  |
| 78 | 1.12.3 | Final Validation |  | 5d | 2025-12-17 | 2025-12-24 | 77 |  |  |  | 0d |  | Andrew Asamoah; Philip Mante Asare; Stephen Addo | 120h |  |
| 79 | 1.13 | GO-LIVE | milestone | 0d | 2025-12-24 | 2025-12-24 | 78 |  |  |  | 0d |  | Philip Mante Asare |  |  |

| ID | WBS | Task | Type | Duration | Start | Finish | Predecessors | Total slack | Resources | Work |
| --- | --- | --- | --- | --- | --- | --- | --- | --- | --- | --- |
| 80 | 1.14 | **Phase 8: Post-Deployment Support** |  | 14d | 2025-12-24 | 2026-01-13 | 79 | 0d | Philip Mante Asare | 464h |
| 81 | 1.14.1 | System Monitoring |  | 2d | 2025-12-24 | 2025-12-26 |  | 0d | Andrew Asamoah; Philip Mante Asare; Stephen Addo; Ernest Duker | 64h |
| 82 | 1.14.2 | Post-Deployment Issue Resolution |  | 10d | 2025-12-26 | 2026-01-09 | 81 | 0d | Andrew Asamoah; Philip Mante Asare; Ernest Duker | 240h |
| 83 | 1.14.3 | Project Closure |  | 2d | 2026-01-09 | 2026-01-13 | 82 | 0d | Andrew Asamoah; Philip Mante Asare; Ernest Duker | 48h |
| 84 | 1.15 | PROJECT CLOSE | milestone | 0d | 2026-01-13 | 2026-01-13 | 83 | 0d | Andrew Asamoah; Philip Mante Asare |  |
